# Gant_v1

Schedule from MS Project, 2013-04-08 to 2013-06-04.
Hewlett-Packard

## Calendars

- PSCalendar: Mon-Sat 08:00-12:00, 13:00-17:00; Sun off.

## Resources

| Resource |
| --- |
| Carla Machado |
| David João |
| Filipe Brandão |
| João Girão |
| João Martins |
| Mário Oliveira |
| Rui Ganhoto |
| Ma |
| M |

## Schedule

| ID | WBS | Task | Type | Duration | Start | Finish | Predecessors | Total slack | Constraint | Resources | Work |
| --- | --- | --- | --- | --- | --- | --- | --- | --- | --- | --- | --- |
| 2 | 1 | SRS REVIEW | milestone, manual | 0d | 2013-05-06 | 2013-05-06 |  |  |  |  |  |
| 3 | 2 | **Requirements Analysis** |  | 30d | 2013-04-08 | 2013-05-11 |  | 0d |  |  | 790h |
| 4 | 2.1 | **Elicitation (brainstorming) + Use Case Diagram (draft)** |  | 0.75d | 2013-04-08 | 2013-04-08 |  |  |  |  | 42h |
| 5 | 2.1.1 | 1 | manual | 0.75d | 2013-04-08 | 2013-04-08 |  |  |  | Carla Machado | 6h |
| 6 | 2.1.2 | 2 | manual | 0.75d | 2013-04-08 | 2013-04-08 |  |  |  | David João | 6h |
| 7 | 2.1.3 | 3 | manual | 0.75d | 2013-04-08 | 2013-04-08 |  |  |  | Filipe Brandão | 6h |
| 8 | 2.1.4 | 4 | manual | 0.75d | 2013-04-08 | 2013-04-08 |  |  |  | João Girão | 6h |
| 9 | 2.1.5 | 5 | manual | 0.75d | 2013-04-08 | 2013-04-08 |  |  |  | João Martins | 6h |
| 10 | 2.1.6 | 6 | manual | 0.75d | 2013-04-08 | 2013-04-08 |  |  |  | Mário Oliveira | 6h |
| 11 | 2.1.7 | 7 | manual | 0.75d | 2013-04-08 | 2013-04-08 |  |  |  | Rui Ganhoto | 6h |
| 12 | 2.2 | **Use Cases definition + Mockups + Business Rules** |  | 10.75d | 2013-04-09 | 2013-04-20 | 4 | 0d |  |  | 80h |
| 13 | 2.2.1 | Writing Use Cases | manual | 4.5d | 2013-04-10 | 2013-04-15 |  |  |  | Carla Machado | 28h |
| 14 | 2.2.2 | Updated Use Cases | manual | 0.75d | 2013-04-20 | 2013-04-20 |  |  |  | Carla Machado | 6h |
| 15 | 2.2.3 | Use Case Definition | manual | 2.75d | 2013-04-09 | 2013-04-11 |  |  |  | Rui Ganhoto | 22h |
| 16 | 2.2.4 | Mockups + Business Rules | manual | 3d | 2013-04-11 | 2013-04-13 |  |  |  | Filipe Brandão | 24h |
| 17 | 2.3 | Risk meeting | manual | 0.75d | 2013-04-20 | 2013-04-20 |  |  | start no earlier than 2013-04-20 | Carla Machado; David João; Filipe Brandão; João Girão; Mário Oliveira; Rui Ganhoto | 36h |
| 18 | 2.4 | **Requirements Definition + SRS production** |  | 15d | 2013-04-09 | 2013-04-25 | 4 |  |  |  | 234h |
| 19 | 2.4.1 | Requirements Definition | manual | 3d | 2013-04-09 | 2013-04-11 |  |  |  | Mário Oliveira | 24h |
| 20 | 2.4.2 | Interview + Requirements Definition | manual | 4d | 2013-04-17 | 2013-04-20 |  |  |  | Mário Oliveira | 32h |
| 21 | 2.4.3 | Requirements Definition | manual | 5d | 2013-04-21 | 2013-04-25 |  |  |  | Mário Oliveira | 40h |
| 22 | 2.4.4 | Requirements Definition | manual | 3d | 2013-04-09 | 2013-04-11 |  |  |  | João Girão | 24h |
| 23 | 2.4.5 | Interview + Requirements Definition | manual | 4d | 2013-04-17 | 2013-04-20 |  |  |  | João Girão | 32h |
| 24 | 2.4.6 | Requirements Definition | manual | 5d | 2013-04-21 | 2013-04-25 |  |  |  | João Girão | 40h |
| 25 | 2.4.7 | Interview | manual | 1.25d | 2013-04-18 | 2013-04-19 |  |  |  | João Martins | 10h |
| 26 | 2.4.8 | Help | manual | 4d | 2013-04-21 | 2013-04-24 |  |  |  | Carla Machado | 32h |

| ID | WBS | Task | Type | Duration | Start | Finish | Predecessors | Total slack | Free slack | Constraint | Resources | Work |
| --- | --- | --- | --- | --- | --- | --- | --- | --- | --- | --- | --- | --- |
| 27 | 2.5 | **Acceptance tests planning** |  | 15.25d | 2013-04-13 | 2013-05-01 | 4 | 0d |  |  |  | 156h |
| 28 | 2.5.1 | Acceptance tests | manual | 5.25d | 2013-04-13 | 2013-04-19 |  |  |  |  | João Martins | 42h |
| 29 | 2.5.2 | Rework + Continuation | manual | 4.5d | 2013-04-20 | 2013-04-25 |  |  |  |  | João Martins | 36h |
| 30 | 2.5.3 | New Tests | manual | 0.5d | 2013-04-27 | 2013-04-27 |  |  |  |  | João Martins | 4h |
| 31 | 2.5.4 | Tests | manual | 0.25d | 2013-05-01 | 2013-05-01 |  |  |  |  | João Martins | 2h |
| 32 | 2.5.5 | Acceptance Tests | manual | 5.25d | 2013-04-14 | 2013-04-19 |  |  |  |  | David João | 42h |
| 33 | 2.5.6 | Continuation | manual | 3.5d | 2013-04-20 | 2013-04-24 |  |  |  |  | David João | 28h |
| 34 | 2.5.7 | Tests | manual | 0.25d | 2013-05-01 | 2013-05-01 |  |  |  |  | David João | 2h |
| 35 | 2.6 | **SRS Inspection** |  | 14d | 2013-04-26 | 2013-05-11 | 18 | 2d |  |  |  | 192h |
| 36 | 2.6.1 | **Planning + Preparation** |  | 1.5d | 2013-04-28 | 2013-04-30 | 18 | 0d |  |  |  | 80h |
| 37 | 2.6.1.1 | Study of the SRS |  | 1.25d | 2013-04-29 | 2013-04-30 |  | 30.75d |  | start no earlier than 2013-04-28 | Carla Machado | 8h |
| 38 | 2.6.1.2 | Study of the SRS | manual | 2.25d | 2013-04-28 | 2013-04-30 |  |  |  |  | David João | 18h |
| 39 | 2.6.1.3 | Study of the SRS | manual | 1.75d | 2013-04-28 | 2013-04-29 |  |  |  |  | Filipe Brandão | 14h |
| 40 | 2.6.1.4 | sTudy of the SRS | manual | 2.5d | 2013-04-28 | 2013-04-30 |  |  |  |  | Rui Ganhoto | 20h |
| 41 | 2.6.1.5 | Study of the SRS | manual | 2.5d | 2013-04-28 | 2013-04-30 |  |  |  |  | João Martins | 20h |
| 42 | 2.6.2 | Rework + Followup |  | 4d | 2013-04-26 | 2013-05-01 |  | 29d |  |  | Mário Oliveira; João Girão | 64h |
| 43 | 2.6.3 | Replan | manual | 6d | 2013-05-06 | 2013-05-11 |  |  |  |  | Filipe Brandão | 48h |
| 44 | 2.7 | Reestimate |  | 1.25d | 2013-05-06 | 2013-05-07 |  | 24.75d |  | start no earlier than 2013-05-06 | Carla Machado; Rui Ganhoto; Filipe Brandão; João Martins; David João | 50h |
| 45 | 3 | CODE REVIEW | milestone, manual | 0d | 2013-05-17 | 2013-05-17 |  |  |  |  |  |  |
| 46 | 4 | **Development** |  | 33d | 2013-04-27 | 2013-06-04 | 18 | 0d |  |  |  | 872h |
| 47 | 4.1 | **Database** |  | 7.25d | 2013-04-27 | 2013-05-06 |  | -0.12d | 0d |  |  | 32h |
| 48 | 4.1.1 | **Architecture definition (ER diagram)** |  | 1.5d | 2013-04-27 | 2013-04-29 | 18 | 0d |  |  |  | 18h |
| 49 | 4.1.1.1 | ER model | manual | 0.75d | 2013-04-28 | 2013-04-28 |  |  |  |  | Filipe Brandão | 6h |
| 50 | 4.1.1.2 | ER Model | manual | 1.5d | 2013-04-27 | 2013-04-29 |  |  |  |  | João Martins | 12h |
| 51 | 4.1.2 | Walkthrough |  | 0.25d | 2013-05-06 | 2013-05-06 |  | -1.12d | 0d | start no earlier than 2013-05-06 | Carla Machado; David João; Filipe Brandão; João Girão; João Martins; Mário Oliveira; Rui Ganhoto | 14h |

| ID | WBS | Task | Duration | Start | Finish | Predecessors | Total slack | Free slack | Constraint | Resources | Work |
| --- | --- | --- | --- | --- | --- | --- | --- | --- | --- | --- | --- |
| 52 | 4.2 | **Coding** | 20d | 2013-05-13 | 2013-06-04 | 42 |  |  |  |  | 840h |
| 53 | 4.2.1 | Database Module Implementation | 8d | 2013-05-07 | 2013-05-16 | 51 | -0.88d | 0d | start no earlier than 2013-05-07 | Rui Ganhoto | 64h |
| 54 | 4.2.2 | **Adding tasks** | 14.12d | 2013-05-08 | 2013-05-24 |  |  |  |  |  | 64h |
| 55 | 4.2.2.1 | Adding tasks - UI | 2d | 2013-05-08 | 2013-05-09 |  | 22d |  | start no earlier than 2013-05-08 | David João | 16h |
| 56 | 4.2.2.2 | Adding tasks - Functionality | 5d | 2013-05-17 | 2013-05-23 | 53, 55 | -0.88d | 0d |  | David João | 40h |
| 57 | 4.2.2.3 | Adding tasks - Integration | 1d | 2013-05-24 | 2013-05-24 | 53, 56 | -0.88d | 0d |  | David João | 8h |
| 58 | 4.2.3 | **Show tasks details** | 12.12d | 2013-05-08 | 2013-05-22 |  |  |  |  |  | 40h |
| 59 | 4.2.3.1 | Show tasks details - UI | 1d | 2013-05-08 | 2013-05-08 |  | 23d |  | start no earlier than 2013-05-08 | David João | 8h |
| 60 | 4.2.3.2 | Show tasks details - Functionality | 3d | 2013-05-17 | 2013-05-21 | 53 | -0.88d | 0d |  | João Girão | 24h |
| 61 | 4.2.3.3 | Show tasks details - Integration | 1d | 2013-05-22 | 2013-05-22 | 53, 60 | -0.88d | 0d |  | João Girão | 8h |
| 62 | 4.2.4 | **Show tasks listing** | 13d | 2013-05-15 | 2013-05-29 |  |  |  |  |  | 104h |
| 63 | 4.2.4.1 | Show tasks listing - UI | 2d | 2013-05-15 | 2013-05-16 |  | -2d | 0d |  | Rui Ganhoto | 16h |
| 64 | 4.2.4.2 | Show tasks listing - Functionality | 10d | 2013-05-17 | 2013-05-30 | 63 | -2d | 0d |  | Mário Oliveira | 80h |
| 65 | 4.2.4.3 | Show tasks listing - Integration | 1d | 2013-05-31 | 2013-05-31 | 53, 64 | -2d | 0d |  | Mário Oliveira | 8h |
| 66 | 4.2.5 | **Inactivity Alerts** | 23d | 2013-05-08 | 2013-06-03 | 58, 54 | 0d |  |  |  | 104h |
| 67 | 4.2.5.1 | Inactivity Alerts (detection) | 8d | 2013-05-23 | 2013-06-03 | 61 | 1d |  | start no earlier than 2013-05-15 | João Girão | 64h |
| 68 | 4.2.5.2 | **Inactivity alerts (user reaction)** | 12.12d | 2013-05-08 | 2013-05-22 |  |  |  |  |  | 40h |
| 69 | 4.2.5.2.1 | Inactivity alerts (user reaction)- UI | 1d | 2013-05-08 | 2013-05-08 |  | 23d |  | start no earlier than 2013-05-08 | David João | 8h |
| 70 | 4.2.5.2.2 | Inactivity alerts (user reaction) - Functionality | 3d | 2013-05-17 | 2013-05-21 | 53, 69 | -0.88d | 0d |  | João Martins | 24h |
| 71 | 4.2.5.2.3 | Inactivity alerts (user reaction) - Integration | 1d | 2013-05-22 | 2013-05-22 | 53, 70 | -0.88d | 0d |  | João Martins | 8h |
| 72 | 4.2.6 | **Edit and Delete task** | 8d | 2013-05-15 | 2013-05-23 | 54 |  |  |  |  | 64h |
| 73 | 4.2.6.1 | Edit and Delete task - UI | 2d | 2013-05-15 | 2013-05-16 |  | -1d | 0d |  | Rui Ganhoto | 16h |
| 74 | 4.2.6.2 | Edit and Delete task - Functionality | 5d | 2013-05-17 | 2013-05-23 | 73 | -1d | 0d |  | Carla Machado | 40h |
| 75 | 4.2.6.3 | Edit and Delete task - Integration | 1d | 2013-05-24 | 2013-05-24 | 74 | -1d | 0d |  | Carla Machado | 8h |
| 76 | 4.2.7 | Export app data | 5d | 2013-05-17 | 2013-05-23 | 53 | 10d |  | start no earlier than 2013-05-15 | Filipe Brandão | 40h |
| 77 | 4.2.8 | Shortcuts | 5d | 2013-05-24 | 2013-05-31 | 54 | 3.88d |  |  | David João | 40h |
| 78 | 4.2.9 | Settings | 5d | 2013-05-23 | 2013-05-29 | 71 | 5d |  |  | João Martins | 40h |
| 79 | 4.2.10 | Timing individual tasks | 8d | 2013-05-17 | 2013-05-28 | 53 | 6d |  |  | Rui Ganhoto | 64h |

| ID | WBS | Task | Type | Duration | Start | Finish | Predecessors | Total slack | Free slack | Constraint | Resources | Work |
| --- | --- | --- | --- | --- | --- | --- | --- | --- | --- | --- | --- | --- |
| 80 | 4.2.11 | **Code Inspection** |  | 7d | 2013-05-17 | 2013-05-24 | 53 | 4d |  |  |  | 216h |
| 81 | 4.2.11.1 | Preparation |  | 2d | 2013-05-17 | 2013-05-20 |  | 8d | 0d |  | David João; Carla Machado; João Girão; João Martins; Mário Oliveira | 80h |
| 82 | 4.2.11.2 | Meeting |  | 2d | 2013-05-21 | 2013-05-22 | 81 | 8d | 0d |  | Carla Machado; David João; Filipe Brandão; João Girão; João Martins; Mário Oliveira; Rui Ganhoto | 112h |
| 83 | 4.2.11.3 | Rework | manual | 2d | 2013-05-22 | 2013-05-23 | 82 |  |  |  | Rui Ganhoto | 16h |
| 84 | 4.2.11.4 | Followup |  | 1d | 2013-05-24 | 2013-05-24 | 83 | 9d |  |  | Filipe Brandão | 8h |
| 85 | 5 | ACCEPTANCE | milestone, manual | 0d | 2013-05-31 | 2013-05-31 |  |  |  |  |  |  |
| 86 | 6 | **Acceptance Tests** |  | 2.5d | 2013-05-31 | 2013-06-03 |  |  |  |  |  | 155.52h |
| 87 | 6.1 | Execution | manual | 2.5d | 2013-05-31 | 2013-06-03 |  |  |  | start no earlier than 2013-05-31 | Carla Machado; Filipe Brandão | 23.52h |
| 88 | 6.2 | Fixing |  | 1d | 2013-05-31 | 2013-05-31 |  | 3d |  | start no earlier than 2013-05-31 | David João; Mário Oliveira; João Girão; João Martins; Rui Ganhoto | 40h |
| 89 | 6.3 | **Management** |  | 13.5d | 2013-05-18 | 2013-06-03 |  | 0d |  |  |  | 84h |
| 90 | 6.3.1 | Project | manual | 1.5d | 2013-05-18 | 2013-05-20 |  |  |  |  | Filipe Brandão | 12h |
| 91 | 6.3.2 | Quality | manual | 1.5d | 2013-05-18 | 2013-05-20 |  |  |  |  | Carla Machado | 12h |
| 92 | 6.3.3 | Risk | manual | 0.25d | 2013-05-18 | 2013-05-18 |  |  |  |  | Rui Ganhoto | 2h |
| 93 | 6.3.4 | Repository | manual | 0.25d | 2013-05-18 | 2013-05-18 |  |  |  |  | Mário Oliveira | 2h |
| 94 | 6.3.5 | Project | manual | 1.5d | 2013-05-25 | 2013-05-27 |  |  |  |  | Filipe Brandão | 12h |
| 95 | 6.3.6 | Quality | manual | 1.5d | 2013-05-25 | 2013-05-27 |  |  |  |  | Carla Machado | 12h |
| 96 | 6.3.7 | Risk | manual | 0.25d | 2013-05-25 | 2013-05-25 |  |  |  |  | Rui Ganhoto | 2h |
| 97 | 6.3.8 | Repository | manual | 0.25d | 2013-05-25 | 2013-05-25 |  |  |  |  | Mário Oliveira | 2h |
| 98 | 6.3.9 | Project | manual | 1.5d | 2013-06-01 | 2013-06-03 |  |  |  |  | Filipe Brandão | 12h |
| 99 | 6.3.10 | Quality | manual | 1.5d | 2013-06-01 | 2013-06-03 |  |  |  |  | Carla Machado | 12h |
| 100 | 6.3.11 | Risk | manual | 0.25d | 2013-06-01 | 2013-06-01 |  |  |  |  | Rui Ganhoto | 2h |
| 101 | 6.3.12 | Repository | manual | 0.25d | 2013-06-01 | 2013-06-01 |  |  |  |  | Mário Oliveira | 2h |
| 102 | 6.4 | **Minutes** |  | 13d | 2013-05-13 | 2013-05-27 |  | 0d |  |  |  | 8h |
| 103 | 6.4.1 | 1 | manual | 1d | 2013-05-13 | 2013-05-13 |  |  |  |  | João Martins | 8h |
| 104 | 6.4.2 | 2 | manual | 1d | 2013-05-20 | 2013-05-20 |  |  |  |  |  |  |
| 105 | 6.4.3 | 3 | manual | 1d | 2013-05-27 | 2013-05-27 |  |  |  |  |  |  |
