# Gant_v1

Schedule from MS Project, 2013-04-08 to 2013-06-05.
Hewlett-Packard

## Calendars

- PSCalendar: Mon-Sat 08:00-12:00, 13:00-17:00; Sun off.

## Resources

| Resource |
| --- |
| Carla Machado |
| David João |
| Filipe Brandão |
| João Girão |
| João Martins |
| Mário Oliveira |
| Rui Ganhoto |

## Schedule

| ID | WBS | Task | Duration | Start | Finish | Predecessors | Total slack | Free slack | Constraint | Resources | Work |
| --- | --- | --- | --- | --- | --- | --- | --- | --- | --- | --- | --- |
| 1 | 1 | **Requirements Analysis** | 26.58d | 2013-04-08 | 2013-05-08 |  | 2d |  |  |  | 924.08h |
| 2 | 1.1 | Elicitation (brainstorming) + Use Case Diagram (draft) | 1.86d | 2013-04-08 | 2013-04-09 |  | 2d | 0d |  | Carla Machado; David João; Filipe Brandão; João Girão; João Martins; Mário Oliveira; Rui Ganhoto | 104.16h |
| 3 | 1.2 | Use Cases definition + Mockups + Business Rules | 4.4d | 2013-04-09 | 2013-04-16 | 2 | 45.6d |  |  | Filipe Brandão; João Girão; Mário Oliveira | 105.6h |
| 4 | 1.3 | Risk meeting | 0.75d | 2013-04-22 | 2013-04-22 |  | 40.11d |  | start no earlier than 2013-04-20 | Carla Machado; David João; Filipe Brandão; João Girão; João Martins; Mário Oliveira; Rui Ganhoto | 42h |
| 5 | 1.4 | Requirements Definition + SRS production | 10d | 2013-04-11 | 2013-04-25 | 2 | 0d |  | start no earlier than 2013-04-11 | João Martins; Rui Ganhoto | 160h |
| 6 | 1.5 | Acceptance tests planning | 6.5d | 2013-04-16 | 2013-04-25 | 2 | 37.5d |  | start no earlier than 2013-04-16 | Carla Machado; David João | 104h |
| 7 | 1.6 | **SRS Inspection** | 10.72d | 2013-04-25 | 2013-05-08 | 5 | 0d |  |  |  | 328.32h |
| 8 | 1.6.1 | Planning + Preparation | 1.86d | 2013-04-25 | 2013-04-29 | 5 | 0d |  |  | Carla Machado; David João; Filipe Brandão; João Girão; João Martins; Mário Oliveira; Rui Ganhoto | 104.16h |
| 9 | 1.6.2 | Meeting | 2.86d | 2013-04-29 | 2013-05-02 | 8 | 0d |  |  | Carla Machado; David João; Filipe Brandão; João Girão; João Martins; Mário Oliveira; Rui Ganhoto | 160.16h |
| 10 | 1.6.3 | Rework + Followup | 4d | 2013-05-02 | 2013-05-08 | 9 | 0d |  |  | João Martins; Rui Ganhoto | 64h |
| 11 | 1.7 | Reestimate | 2d | 2013-05-02 | 2013-05-06 | 9 | 26.28d |  |  | Carla Machado; David João; Filipe Brandão; João Girão; Mário Oliveira | 80h |
| 12 | 2 | **Development** | 27.72d | 2013-04-25 | 2013-05-28 | 5 | 6.36d |  |  |  | 796.48h |
| 13 | 2.1 | **Database** | 4.36d | 2013-04-25 | 2013-05-01 |  | 6.36d |  |  |  | 116.16h |
| 14 | 2.1.1 | Architecture definition (ER diagram) | 1.5d | 2013-04-25 | 2013-04-29 | 5 | 8.36d | 0d |  | João Martins | 12h |
| 15 | 2.1.2 | Walkthrough | 1.86d | 2013-04-29 | 2013-05-01 | 14 | 8.36d |  |  | Carla Machado; David João; Filipe Brandão; João Girão; João Martins; Mário Oliveira; Rui Ganhoto | 104.16h |
| 16 | 2.2 | **Coding** | 17d | 2013-05-08 | 2013-05-28 | 10 | 0d |  |  |  | 680.32h |
| 17 | 2.2.1 | Database Module Implementation | 5d | 2013-05-08 | 2013-05-15 | 15 | 0d |  | start no earlier than 2013-05-07 | David João | 40h |
| 18 | 2.2.2 | **Adding tasks** | 7d | 2013-05-08 | 2013-05-16 |  | 7.28d | 0d |  | Rui Ganhoto | 48h |
| 19 | 2.2.2.1 | UI | 1d | 2013-05-08 | 2013-05-09 |  | 9.28d | 0d |  |  |  |
| 20 | 2.2.2.2 | Functionality | 3d | 2013-05-09 | 2013-05-13 | 19 | 9.28d | 2d |  |  |  |
| 21 | 2.2.2.3 | Integração | 1d | 2013-05-15 | 2013-05-16 | 17, 20 | 7.28d |  |  |  |  |
| 22 | 2.2.3 | **Show tasks details** | 7d | 2013-05-08 | 2013-05-16 |  | 17.28d |  |  | João Girão | 48h |
| 23 | 2.2.3.1 | UI | 1d | 2013-05-08 | 2013-05-09 |  | 19.28d | 0d |  |  |  |
| 24 | 2.2.3.2 | Functionality | 3d | 2013-05-09 | 2013-05-13 | 23 | 19.28d | 2d |  |  |  |
| 25 | 2.2.3.3 | Integração | 1d | 2013-05-15 | 2013-05-16 | 17, 24 | 17.28d |  |  |  |  |

| ID | WBS | Task | Duration | Start | Finish | Predecessors | Total slack | Free slack | Constraint | Resources | Work |
| --- | --- | --- | --- | --- | --- | --- | --- | --- | --- | --- | --- |
| 26 | 2.2.4 | **Show tasks listing** | 7d | 2013-05-08 | 2013-05-16 |  | 17.28d |  |  | João Martins | 48h |
| 27 | 2.2.4.1 | UI | 1d | 2013-05-08 | 2013-05-09 |  | 19.28d | 0d |  |  |  |
| 28 | 2.2.4.2 | Functionality | 3d | 2013-05-09 | 2013-05-13 | 27 | 19.28d | 2d |  |  |  |
| 29 | 2.2.4.3 | Integração | 1d | 2013-05-15 | 2013-05-16 | 17, 28 | 17.28d |  |  |  |  |
| 30 | 2.2.5 | **Inactivity Alerts** | 10d | 2013-05-16 | 2013-05-28 | 18 | 7.28d |  |  | Rui Ganhoto | 64h |
| 31 | 2.2.5.1 | Inactivity Alerts (detection) | 8d | 2013-05-16 | 2013-05-25 |  | 7.28d | 0d | start no earlier than 2013-05-07 |  |  |
| 32 | 2.2.5.2 | **Inactivity alerts (user reaction)** | 8d | 2013-05-16 | 2013-05-25 |  | 7.28d | 0d |  |  |  |
| 33 | 2.2.5.2.1 | UI | 1d | 2013-05-16 | 2013-05-17 |  | 7.28d | 0d |  |  |  |
| 34 | 2.2.5.2.2 | Functionality | 6d | 2013-05-17 | 2013-05-24 | 33 | 7.28d | 0d |  |  |  |
| 35 | 2.2.5.2.3 | Integração | 1d | 2013-05-24 | 2013-05-25 | 17, 34 | 7.28d |  |  |  |  |
| 36 | 2.2.5.3 | Integration | 2d | 2013-05-25 | 2013-05-28 | 31, 32 | 7.28d |  |  |  |  |
| 37 | 2.2.6 | **Edit and Delete task** | 5d | 2013-05-16 | 2013-05-22 | 18 | 12.28d |  |  | Mário Oliveira | 32h |
| 38 | 2.2.6.1 | UI | 1d | 2013-05-16 | 2013-05-17 |  | 12.28d | 0d |  |  |  |
| 39 | 2.2.6.2 | Functionality | 3d | 2013-05-17 | 2013-05-21 | 38 | 12.28d | 0d |  |  |  |
| 40 | 2.2.6.3 | Integration | 1d | 2013-05-21 | 2013-05-22 | 39 | 12.28d |  |  |  |  |
| 41 | 2.2.7 | Export app data | 8d | 2013-05-15 | 2013-05-27 | 17 | 8.28d |  |  | David João | 64h |
| 42 | 2.2.8 | Timing individual tasks | 5d | 2013-05-15 | 2013-05-22 | 17 | 12.28d |  |  | João Girão | 40h |
| 43 | 2.2.9 | **Code Inspection** | 10.72d | 2013-05-15 | 2013-05-28 | 17 | 0d |  |  |  | 296.32h |
| 44 | 2.2.9.1 | Planning + Preparation | 1.86d | 2013-05-15 | 2013-05-17 |  | 0d |  |  | Carla Machado; David João; Filipe Brandão; João Girão; João Martins; Mário Oliveira; Rui Ganhoto | 104.16h |
| 45 | 2.2.9.2 | Meeting | 2.86d | 2013-05-17 | 2013-05-22 | 44 | 0d |  |  | Carla Machado; David João; Filipe Brandão; João Girão; João Martins; Mário Oliveira; Rui Ganhoto | 160.16h |
| 46 | 2.2.9.3 | Rework + Followup | 4d | 2013-05-22 | 2013-05-28 | 45 | 0d |  |  | Mário Oliveira | 32h |
| 47 | 3 | **Acceptance Tests** | 7.56d | 2013-05-28 | 2013-06-05 | 43 | 0d |  |  |  | 111.04h |
| 48 | 3.1 | Execution | 6.5d | 2013-05-28 | 2013-06-05 |  | 0d |  |  | Carla Machado; Filipe Brandão | 59.04h |
| 49 | 3.2 | Code and fix | 6.5d | 2013-05-28 | 2013-06-05 |  | 0.06d |  |  | David João | 52h |
